# Apertura nueva sede tienda musical

Schedule from ProjectLibre, 2026-10-22 to 2027-02-05.

## Calendars

- Estandar: Mon-Fri 08:00-12:00, 13:00-17:00; Sat-Sun off.

## Resources

| Resource | Rate | Cost per use |
| --- | --- | --- |
| No Asignado |  |  |
| Director de proyecto | 35 |  |
| Arquitecto | 40 |  |
| Especilista IT | 30 |  |
| Encargado de logistica | 20 |  |
| Ascesores comersiales | 15 |  |
| Gerente de tienda | 25 |  |
| Contratista de obra | 12500 | 500 |
| Equipo POS e informatica | 4500 | 150 |
| Mobiliario de exhibicion | 6000 | 200 |

## Schedule

| ID | WBS | Task | Duration | Start | Finish | Predecessors | Resources |
| --- | --- | --- | --- | --- | --- | --- | --- |
| 1 | 1 | **1. Planificación Estratégica y Viabilidad** | 30d | 2026-10-22 | 2026-12-02 |  |  |
| 2 | 1.1 | 1.1. Análisis de mercado local y ubicación de la nueva sede (Zona comercial/acústica) | 5d | 2026-10-22 | 2026-10-28 |  | Director de proyecto |
| 3 | 1.2 | 1.2. Negociación y firma de contrato de arrendamiento del local | 10d | 2026-10-29 | 2026-11-11 | 2 |  |
| 4 | 1.3 | 1.3. Presupuesto maestro y cronograma financiero del proyecto | 4d | 2026-11-12 | 2026-11-17 | 3 |  |
| 5 | 1.4 | 1.4. Gestión de licencias comerciales, permisos municipales y normativas de insonorización | 15d | 2026-11-12 | 2026-12-02 | 3 | Director de proyecto |
| 6 | 2 | **2. Adecuación del Local e Infraestructura Física** | 47d | 2026-11-12 | 2027-01-15 |  |  |
| 7 | 2.1 | 2.1. Diseño arquitectónico y distribución de zonas (Exhibición, bodegas, cabinas de prueba) | 7d | 2026-11-12 | 2026-11-20 | 3 | Arquitecto |
| 8 | 2.2 | 2.2. Obras de remodelación civil (Pintura, iluminación especializada y acabados) | 30d | 2026-11-23 | 2027-01-01 | 7 | Arquitecto; Contratista de obra |
| 9 | 2.3 | 2.3. Instalación de sistema eléctrico reforzado y climatización (A/C para proteger instrumentos de madera) | 10d | 2027-01-04 | 2027-01-15 | 8 | Arquitecto; Contratista de obra |
| 10 | 2.4 | 2.4. Instalación de seguridad física (Alarmas, cámaras de seguridad y sistemas antihurto) | 4d | 2027-01-04 | 2027-01-07 | 8 | Arquitecto |
| 11 | 3 | **3. Cadena de Suministro e Inventario Inicial** | 43d | 2026-11-18 | 2027-01-15 |  |  |
| 12 | 3.1 | 3.1. Selección y pedido de instrumentos y accesorios a proveedores principales (Yamaha, Fender, etc.) | 10d | 2026-11-18 | 2026-12-01 | 4 | Encargado de logistica [50%] |
| 13 | 3.2 | 3.2. Diseño y montaje de mobiliario comercial (Exhibidores de guitarras, soportes de pared, estanterías) | 5d | 2027-01-04 | 2027-01-08 | 8 | Encargado de logistica [50%]; Mobiliario de exhibicion |
| 14 | 3.3 | 3.3. Recepción, control de calidad y registro masivo del inventario en el sistema de la tienda | 5d | 2027-01-11 | 2027-01-15 | 12, 13 | Encargado de logistica [50%] |
| 15 | 3.4 | 3.4. Preparación de zona de bodega y almacenamiento seguro | 3d | 2027-01-04 | 2027-01-06 | 8 | Encargado de logistica [50%] |
| 16 | 4 | **4. Sistemas, Tecnología y Conectividad** | 10d | 2027-01-04 | 2027-01-15 |  |  |
| 17 | 4.1 | 4.1. Instalación de red de datos (Cableado estructurado y Wi-Fi de alta velocidad) | 4d | 2027-01-04 | 2027-01-07 | 8 | Especilista IT |
| 18 | 4.2 | 4.2. Configuración de terminales de punto de venta (POS), lector de códigos y cajón de dinero | 3d | 2027-01-08 | 2027-01-12 | 17 | Especilista IT; Equipo POS e informatica |
| 19 | 4.3 | 4.3. Conexión de la base de datos de inventario con el sistema central de la empresa | 3d | 2027-01-13 | 2027-01-15 | 18 | Especilista IT |
| 20 | 4.4 | 4.4.Instalacion de equipos | 2d | 2027-01-08 | 2027-01-11 | 17 | Especilista IT; Equipo POS e informatica |
| 21 | 5 | **5. Reclutamiento, Selección y Capacitación** | 44.75d | 2026-11-18 | 2027-01-19 |  |  |
| 22 | 5.1 | 5.1. Publicación de ofertas de empleo (Gerente de sede, asesores comerciales expertos en música, cajeros) | 7d | 2026-11-18 | 2026-11-26 | 4 |  |
| 23 | 5.2 | 5.2. Procesos de entrevistas técnicas y pruebas de conocimiento en instrumentos musicales | 10d | 2026-11-27 | 2026-12-10 | 22 | Gerente de tienda |
| 24 | 5.3 | 5.3. Contratación formal del personal de la nueva sede | 3d | 2026-12-11 | 2026-12-15 | 23 | Gerente de tienda |
| 25 | 5.4 | 5.4. Capacitación en atención al cliente, manejo del sistema POS y protocolos de la tienda | 1.75d | 2027-01-18 | 2027-01-19 | 19, 24 | Gerente de tienda; Ascesores comersiales |

| ID | WBS | Task | Duration | Start | Finish | Predecessors | Resources |
| --- | --- | --- | --- | --- | --- | --- | --- |
| 26 | 6 | **6. Marketing y Campaña de Lanzamiento** | 57d | 2026-11-18 | 2027-02-04 |  |  |
| 27 | 6.1 | 6.1. Diseño de la campaña publicitaria local (Redes sociales, radios locales y volantes) | 8d | 2026-11-18 | 2026-11-27 | 4 |  |
| 28 | 6.2 | 6.2. Creación de material gráfico, rótulos exteriores y señalética de la tienda | 7d | 2026-11-30 | 2026-12-08 | 27 |  |
| 29 | 6.3 | 6.3. Planificación del evento de inauguración (Invitación a músicos locales, influencers y prensa) | 6d | 2026-11-30 | 2026-12-07 | 27 |  |
| 30 | 6.4 | 6.4. Campaña de expectativa de apertura con preventa exclusiva | 14d | 2027-01-18 | 2027-02-04 | 14, 28 | Ascesores comersiales |
| 31 | 7 | **7. Inauguración y Cierre del Proyecto** | 12.5d | 2027-01-19 | 2027-02-05 |  |  |
| 32 | 7.1 | 7.1. Ensayo general de operaciones y simulación de ventas con el equipo | 1d | 2027-01-19 | 2027-01-20 | 14, 19, 25 | Gerente de tienda |
| 33 | 7.2 | 7.2. Gran evento de apertura oficial al público ("Grand Opening") | 0.5d | 2027-01-20 | 2027-01-21 | 29, 32 | Gerente de tienda |
| 34 | 7.3 | 7.3. Monitoreo de ventas y ajuste de operaciones de la primera semana | 7d | 2027-01-21 | 2027-02-01 | 33 | Ascesores comersiales |
| 35 | 7.4 | 7.4. Evaluación final del proyecto, entrega de informes y cierre administrativo | 4d | 2027-02-01 | 2027-02-05 | 34 | Director de proyecto |
| 36 | 7.5 | 7.5. Finalizacion de proyecto | 0d | 2027-02-05 | 2027-02-05 | 35 |  |
